gantt
  title Phase I 12-month work plan (illustrative dates keyed to a generic 2027-07-01 award start; does not represent NSF's realistic award-start estimate off a specific deadline -- see NSF SBIR STTR Process and Readiness Guide, section 4, for the 4 March 2027 planning-target caveat)
  dateFormat YYYY-MM-DD

  section Aim 1: Identity Resolution
  Baseline setup and data curation : a1_1, 2027-07-01, 60d
  Entity resolution experimentation : a1_2, after a1_1, 90d
  Calibration benchmark testing : a1_3, after a1_2, 60d
  Aim 1 go/no-go checkpoint : milestone, a1_gate, after a1_2, 0d

  section Aim 2: Event Provenance
  Event schema and threat model : a2_1, 2027-07-01, 45d
  Provenance implementation : a2_2, after a2_1, 90d
  Tamper detection validation : a2_3, after a2_2, 60d
  Aim 2 go/no-go checkpoint : milestone, a2_gate, after a2_2, 0d

  section Aim 3: Governed Federation
  Policy model design : a3_1, after a1_2 a2_2, 45d
  Access control framework : a3_2, after a3_1, 75d
  Policy enforcement testing : a3_3, after a3_2, 75d
  Aim 3 go/no-go checkpoint : milestone, a3_gate, after a3_1, 0d

  section Integration & Pilot
  Component integration : integ_1, after a1_3 a2_3 a3_3, 60d
  Bounded pilot deployment : integ_2, after integ_1, 60d
  Pilot evaluation : integ_3, after integ_2, 30d

  section Customer Discovery
  Structured interviews : cust_1, 2027-07-01, 120d
  Pilot interest documentation : cust_2, after cust_1, 90d

  section Reporting
  Interim technical report : report_1, after a1_3, 30d
  Phase I final report : report_2, after integ_3, 30d
